# [EPS]DiagramaGantt_MODIFICADO

How a schedule from MS Project changed from version to version. A marks actual dates.

## Version 1 (saved 2015-07-06)

Note of the change: diagrama de gantt modificado

| ID | WBS | Task | Duration | Start | Finish | Predecessors | Total float | Constraint |
| --- | --- | --- | --- | --- | --- | --- | --- | --- |
| 1 | 1 | **Primer Mes** | 23d | 2015-03-23 | 2015-04-24 |  |  |  |
| 2 | 1.1 | **Investigación de pensum, proceso de asignación, exámenes extraordinarios y control de notas** | 10d | 2015-03-23 | 2015-04-07 |  |  |  |
| 3 |  | Facultad de ciencias medicas | 10d | 2015-03-23 | 2015-04-07 |  | 0d |  |
| 4 |  | Escuela de ciencias psicológicas | 10d | 2015-03-23 | 2015-04-07 |  | 0d |  |
| 5 |  | Facultad de odontología | 10d | 2015-03-23 | 2015-04-07 |  | 0d |  |
| 6 |  | Escuela de historia | 10d | 2015-03-23 | 2015-04-07 |  | 0d |  |
| 7 | 1.2 | **Definición de estándares** | 7d | 2015-04-08 | 2015-04-16 | 2 |  |  |
| 8 |  | Estándares para la base de datos | 4d | 2015-04-08 | 2015-04-13 | 3 | 0d |  |
| 9 |  | Estándares de programación | 3d | 2015-04-08 | 2015-04-10 | 4 | 1d |  |
| 10 |  | Estándares de presentación y/ó diseño | 3d | 2015-04-08 | 2015-04-10 | 5 | 0d |  |
| 11 |  | Estándares de documentación de código | 3d | 2015-04-13 | 2015-04-15 | 9 | 1d |  |
| 12 |  | Estándares de realización de manuales | 3d | 2015-04-13 | 2015-04-15 | 10 | 1d |  |
| 13 |  | Estándares de pruebas | 3d | 2015-04-14 | 2015-04-16 | 8 | 0d |  |
| 14 |  | Estándar de diseño de plantillas web | 4d | 2015-04-13 | 2015-04-16 | 10 | 0d |  |
| 15 | 1.3 | **Tecnologías y configuraciones** | 6d | 2015-04-17 | 2015-04-24 | 7 |  |  |
| 16 |  | Instalar y configurar tecnologías a utilizar | 2d | 2015-04-17 | 2015-04-20 | 14 | 4d |  |
| 17 |  | Instalar y configurar servidor de pruebas locales | 2d | 2015-04-23 | 2015-04-24 | 16 | 126d | finish no earlier than 2015-04-24 |
| 18 | 2 | **Segundo Mes** | 19d | 2015-04-27 | 2015-05-22 | 1 |  |  |
| 19 | 2.1 | **Investigación de procesos de control académico** | 19d | 2015-04-27 | 2015-05-22 | 15 |  |  |
| 20 |  | Creación de horarios | 5d | 2015-04-27 | 2015-05-04 | 15 | 0d |  |
| 21 |  | Manejo de pre-requisitos | 2d | 2015-05-05 | 2015-05-06 | 20 | 0d |  |
| 22 |  | Procesos de inscripción y pago de matricula | 3d | 2015-05-07 | 2015-05-11 | 21 | 0d |  |
| 23 |  | Distintos procesos de asignación | 3d | 2015-05-07 | 2015-05-11 | 21 | 9d |  |
| 24 |  | Manejo de des-asignaciones | 3d | 2015-05-12 | 2015-05-14 | 22 | 0d |  |
| 25 |  | Distintos tipos de aprobación de cursos | 4d | 2015-05-12 | 2015-05-15 | 22 | 5d |  |
| 26 |  | Procesos de asignación de examen extemporáneo | 3d | 2015-05-15 | 2015-05-19 | 24 | 0d |  |
| 27 |  | Manejo de pensum por vigencia y cursos con nombres antiguos | 4d | 2015-05-15 | 2015-05-20 | 24 | 2d |  |
| 28 |  | Relación de catedráticos con distintas unidades académicas | 3d | 2015-05-20 | 2015-05-22 | 26 | 0d |  |
| 29 |  | Manejo de notas con detalle de actividades | 3d | 2015-05-20 | 2015-05-22 | 26 | 0d |  |
| 30 | 3 | **Tercer Mes** | 20d | 2015-05-25 | 2015-06-19 | 18 |  |  |
| 31 | 3.1 | **Definición de la base de datos (Diagrama ER Fase I)** | 5d | 2015-05-25 | 2015-05-29 | 19 | 0d |  |
| 32 |  | Diagrama genérico para Escuela de historia | 5d | 2015-05-25 | 2015-05-29 | 19 | 0d |  |
| 33 | 3.2 | **Definición de la base de datos (Diagrama ER Fase II)** | 7d | 2015-06-01 | 2015-06-09 | 31 |  |  |
| 34 |  | Diagrama ampliado para Escuelas/facultades | 2d | 2015-06-01 | 2015-06-02 | 31 | 0d |  |
| 35 |  | Implementación de detalles sobre manejo de usuarios | 1d | 2015-06-03 | 2015-06-03 | 34 | 0d |  |
| 36 |  | Implementación de detalles sobre manejo de cursos | 2d | 2015-06-04 | 2015-06-05 | 35 | 0d |  |
| 37 |  | Implementación de detalles sobre manejo de asignaciones | 2d | 2015-06-08 | 2015-06-09 | 36 | 0d |  |
| 38 | 3.3 | **Definición de la base de datos (Diagrama ER Fase III)** | 5d | 2015-06-10 | 2015-06-16 | 33 |  |  |
| 39 |  | Implementación de detalles sobre manejo de pensum | 2d | 2015-06-10 | 2015-06-11 | 33 | 3d |  |
| 40 |  | Implementación de detalles sobre manejo de cursos | 2d | 2015-06-10 | 2015-06-11 | 33 | 0d |  |
| 41 |  | Implementación de detalles sobre manejo de notas | 2d | 2015-06-12 | 2015-06-15 | 40 | 1d |  |
| 42 |  | Implementación de detalles sobre manejo de des asignaciones | 3d | 2015-06-12 | 2015-06-16 | 40 | 0d |  |
| 43 | 3.4 | **Definición de la base de datos (Diagrama ER Fase IV)** | 3d | 2015-06-17 | 2015-06-19 | 38 |  |  |
| 44 |  | Implementación de detalles sobre manejo de notas | 1d | 2015-06-17 | 2015-06-17 | 38 | 2d |  |
| 45 |  | Implementación de detalles sobre manejo de pre-requisitos | 2d | 2015-06-17 | 2015-06-18 | 38 | 1d |  |
| 46 |  | Implementación de detalles sobre creación de horarios | 3d | 2015-06-17 | 2015-06-19 | 38 | 0d |  |
| 47 | 4 | **Cuarto Mes** | 24d | 2015-06-22 | 2015-07-24 | 30 |  |  |
| 48 | 4.1 | **Definición de arquitectura** | 10d | 2015-06-22 | 2015-07-06 | 43 |  |  |
| 49 |  | Definición de Framework a utilizar | 2d | 2015-06-22 | 2015-06-23 | 43 | 8d |  |
| 50 |  | Diagramas de actividades | 3d | 2015-06-22 | 2015-06-24 | 43 | 0d |  |
| 51 |  | Consultas y validaciones sobre el ER | 3d | 2015-06-25 | 2015-06-29 | 50 | 1d |  |
| 52 |  | Generar script de la base de datos | 2d | 2015-07-01 | 2015-07-02 | 51 | 2d |  |
| 53 |  | Diagramas de casos de uso | 5d | 2015-06-25 | 2015-07-02 | 50 | 0d |  |
| 54 |  | Diagramas de clases | 3d | 2015-07-01 | 2015-07-03 | 51 | 1d |  |
| 55 |  | Diagramas de procesos | 2d | 2015-07-03 | 2015-07-06 | 53 | 0d |  |
| 56 | 4.2 | **Módulo de creación de usuarios** | 10d | 2015-07-07 | 2015-07-20 | 48 |  |  |
| 57 |  | Definición de roles | 1d | 2015-07-07 | 2015-07-07 | 48 | 0d |  |
| 58 |  | Crear usuario | 1d | 2015-07-08 | 2015-07-08 | 57 | 0d |  |
| 59 |  | Modificar usuario | 1d | 2015-07-09 | 2015-07-09 | 58 | 0d |  |
| 60 |  | Eliminar usuario | 2d | 2015-07-10 | 2015-07-13 | 59 | 0d |  |
| 61 |  | Validar usuarios con Departamento de registro y estadística | 2d | 2015-07-14 | 2015-07-15 | 60 | 0d |  |
| 62 |  | Integración | 2d | 2015-07-16 | 2015-07-17 | 61 | 0d |  |
| 63 |  | Pruebas | 1d | 2015-07-20 | 2015-07-20 | 62 | 0d |  |
| 64 | 4.3 | **Módulo de autenticación y permisos** | 4d | 2015-07-21 | 2015-07-24 | 56 |  |  |
| 65 |  | Crear vistas para cada rol | 1d | 2015-07-21 | 2015-07-21 | 56 | 0d |  |
| 66 |  | Validación y redireccinamiento | 1d | 2015-07-22 | 2015-07-22 | 65 | 0d |  |
| 67 |  | Vistas y perfiles de usuarios administrativos | 1d | 2015-07-23 | 2015-07-23 | 66 | 0d |  |
| 68 |  | Implementación | 1d | 2015-07-24 | 2015-07-24 | 67 | 0d |  |
| 69 |  | Pruebas | 1d | 2015-07-24 | 2015-07-24 | 67 | 0d |  |
| 70 | 5 | **Quinto Mes** | 20d | 2015-07-27 | 2015-08-21 | 47 |  |  |

| ID | WBS | Task | Duration | Start | Finish | Predecessors | Total float |
| --- | --- | --- | --- | --- | --- | --- | --- |
| 71 | 5.1 | **Parametrización** | 5d | 2015-07-27 | 2015-07-31 | 64 |  |
| 72 |  | Crear parámetros para creación de pensum | 2d | 2015-07-27 | 2015-07-28 | 64 | 0d |
| 73 |  | Crear parámetros para procesos de asignación | 3d | 2015-07-29 | 2015-07-31 | 72 | 0d |
| 74 |  | Crear parámetros para procesos de desasignación | 3d | 2015-07-29 | 2015-07-31 | 72 | 0d |
| 75 |  | Crear parámetros para ingreso de notas | 5d | 2015-07-27 | 2015-07-31 | 64 | 0d |
| 76 |  | Crear parámetros para asignación de exámenes de recuperación | 5d | 2015-07-27 | 2015-07-31 | 64 | 0d |
| 77 | 5.2 | **Módulo de creación y administración de facultades y escuelas** | 7d | 2015-08-03 | 2015-08-11 | 71 |  |
| 78 |  | Crear Facultad/Escuela | 2d | 2015-08-03 | 2015-08-04 | 71 | 5d |
| 79 |  | Ingreso de Sedes (Centrales / Regionales) | 2d | 2015-08-03 | 2015-08-04 | 71 | 5d |
| 80 |  | Ingreso de Salones | 2d | 2015-08-03 | 2015-08-04 | 71 | 0d |
| 81 |  | Modificar Facultad/Escuela | 1d | 2015-08-05 | 2015-08-05 | 80 | 0d |
| 82 |  | Modificación sobre Sedes | 2d | 2015-08-05 | 2015-08-06 | 80 | 3d |
| 83 |  | Modificación de salones | 2d | 2015-08-05 | 2015-08-06 | 80 | 3d |
| 84 |  | Eliminar Facultad/Escuela | 2d | 2015-08-06 | 2015-08-07 | 81 | 2d |
| 85 |  | Eliminar sedes | 2d | 2015-08-06 | 2015-08-07 | 81 | 2d |
| 86 |  | Eliminar salones | 2d | 2015-08-06 | 2015-08-07 | 81 | 0d |
| 87 |  | Elaboración de Manuales | 2d | 2015-08-10 | 2015-08-11 | 86 | 0d |
| 88 |  | Integración | 2d | 2015-08-10 | 2015-08-11 | 86 | 0d |
| 89 |  | Pruebas | 2d | 2015-08-10 | 2015-08-11 | 86 | 0d |
| 90 | 5.3 | **Módulo de creación y administración de cursos** | 8d | 2015-08-12 | 2015-08-21 | 77 |  |
| 91 |  | Crear Curso | 1d | 2015-08-12 | 2015-08-12 | 77 | 0d |
| 92 |  | Modificar Curso | 1d | 2015-08-13 | 2015-08-13 | 91 | 6d |
| 93 |  | Eliminar Curso | 1d | 2015-08-13 | 2015-08-13 | 91 | 0d |
| 94 |  | Crear Sección | 1d | 2015-08-14 | 2015-08-14 | 93 | 5d |
| 95 |  | Modificar Sección | 1d | 2015-08-14 | 2015-08-14 | 93 | 5d |
| 96 |  | Eliminar Sección | 1d | 2015-08-14 | 2015-08-14 | 93 | 0d |
| 97 |  | Importación de cursos por archivos externos | 1d | 2015-08-17 | 2015-08-17 | 96 | 4d |
| 98 |  | Organización de cursos por sección | 1d | 2015-08-17 | 2015-08-17 | 96 | 0d |
| 99 |  | Elaboración de Manuales | 1d | 2015-08-18 | 2015-08-18 | 98 | 0d |
| 100 |  | Integración | 2d | 2015-08-19 | 2015-08-20 | 99 | 0d |
| 101 |  | Pruebas | 1d | 2015-08-21 | 2015-08-21 | 100 | 0d |
| 102 | 6 | **Sexto Mes** | 24d | 2015-08-24 | 2015-09-25 | 70 |  |
| 103 | 6.1 | **Módulo de Pensum** | 6d | 2015-08-24 | 2015-08-31 | 90 |  |
| 104 |  | Listar cursos | 3d | 2015-08-24 | 2015-08-26 | 90 | 3d |
| 105 |  | Modificar cursos | 3d | 2015-08-24 | 2015-08-26 | 90 | 0d |
| 106 |  | Administración pre-post requisitos | 3d | 2015-08-27 | 2015-08-31 | 105 | 0d |
| 107 |  | Administración de créditos por curso | 4d | 2015-08-24 | 2015-08-27 | 90 | 0d |
| 108 |  | Elaboración de Manuales | 1d | 2015-08-28 | 2015-08-28 | 107 | 0d |
| 109 |  | Integración | 1d | 2015-08-31 | 2015-08-31 | 108 | 0d |
| 110 |  | Pruebas | 1d | 2015-08-31 | 2015-08-31 | 108 | 0d |
| 111 | 6.2 | **Módulo de administración de estudiantes** | 8d | 2015-09-01 | 2015-09-10 | 103 |  |
| 112 |  | Perfil del estudiante | 3d | 2015-09-01 | 2015-09-03 | 103 | 0d |
| 113 |  | Información de contactos | 3d | 2015-09-04 | 2015-09-08 | 112 | 0d |
| 114 |  | Agregar acceso a asignación de estudiantes | 4d | 2015-09-04 | 2015-09-09 | 112 | 1d |
| 115 |  | Agregar acceso a desasignación de estudiantes | 4d | 2015-09-04 | 2015-09-09 | 112 | 1d |
| 116 |  | Elaboración de Manuales | 1d | 2015-09-09 | 2015-09-09 | 113 | 0d |
| 117 |  | Integración | 1d | 2015-09-10 | 2015-09-10 | 116 | 0d |
| 118 |  | Pruebas | 1d | 2015-09-10 | 2015-09-10 | 116 | 0d |
| 119 | 6.3 | **Módulo de administración de catedrático** | 19d | 2015-08-24 | 2015-09-18 |  | 5d |
| 120 |  | Perfil del catedrático | 5d | 2015-08-24 | 2015-08-28 |  | 5d |
| 121 |  | Agregar acceso a ingreso de notas | 4d | 2015-08-31 | 2015-09-03 | 120 | 5d |
| 122 |  | Agregar acceso a consulta de notas | 4d | 2015-09-04 | 2015-09-09 | 121 | 5d |
| 123 |  | Agregar acceso a consulta de estudiantes | 3d | 2015-09-10 | 2015-09-14 | 122 | 5d |
| 124 |  | Elaboración de Manuales | 1d | 2015-09-16 | 2015-09-16 | 123 | 5d |
| 125 |  | Integración | 1d | 2015-09-17 | 2015-09-17 | 124 | 5d |
| 126 |  | Pruebas | 1d | 2015-09-18 | 2015-09-18 | 125 | 5d |
| 127 | 6.4 | **Módulo de asignación de estudiantes** | 5d | 2015-09-21 | 2015-09-25 | 111 |  |
| 128 |  | Listado de cursos disponibles | 2d | 2015-09-21 | 2015-09-22 | 111 | 2d |
| 129 |  | Integración | 1d | 2015-09-23 | 2015-09-23 | 128 | 2d |
| 130 |  | Pruebas | 1d | 2015-09-23 | 2015-09-23 | 128 | 2d |
| 131 | 7 | **Septimo Mes** | 19d | 2015-09-28 | 2015-10-23 | 102 |  |
| 132 | 7.1 | **Módulo de desasignación de estudiantes** | 5d | 2015-09-28 | 2015-10-02 | 127 |  |
| 133 |  | Listado de cursos asignados | 2d | 2015-09-28 | 2015-09-29 | 127 | 0d |
| 134 |  | Integración | 2d | 2015-09-30 | 2015-10-01 | 133 | 0d |
| 135 |  | Pruebas | 1d | 2015-10-02 | 2015-10-02 | 134 | 0d |
| 136 | 7.2 | **Módulo de ingreso de notas** | 5d | 2015-10-05 | 2015-10-09 | 132 |  |
| 137 |  | Listado de estudiantes asignados | 2d | 2015-10-05 | 2015-10-06 | 132 | 0d |
| 138 |  | Asociación de nota a estudiante | 2d | 2015-10-07 | 2015-10-08 | 137 | 0d |
| 139 |  | Integración | 1d | 2015-10-09 | 2015-10-09 | 138 | 0d |
| 140 |  | Pruebas | 1d | 2015-10-09 | 2015-10-09 | 138 | 0d |

| ID | WBS | Task | Duration | Start | Finish | Predecessors | Total float |
| --- | --- | --- | --- | --- | --- | --- | --- |
| 141 | 7.3 | **Módulo de consulta de notas** | 5d | 2015-10-12 | 2015-10-16 | 136 |  |
| 142 |  | Listado de notas por estudiante | 3d | 2015-10-12 | 2015-10-14 | 136 | 2d |
| 143 |  | Promedio de notas por semestre | 3d | 2015-10-12 | 2015-10-14 | 136 | 2d |
| 144 |  | Promedio general de notas | 3d | 2015-10-12 | 2015-10-14 | 136 | 2d |
| 145 |  | Reporte de estudiantes asignados | 3d | 2015-10-12 | 2015-10-14 | 136 | 2d |
| 146 |  | Reporte de estudiantes aprobados | 3d | 2015-10-12 | 2015-10-14 | 136 | 0d |
| 147 |  | Integración | 2d | 2015-10-15 | 2015-10-16 | 146 | 0d |
| 148 |  | Pruebas | 2d | 2015-10-15 | 2015-10-16 | 146 | 0d |
| 149 | 7.4 | **Módulo de consulta de estudiantes** | 4d | 2015-10-19 | 2015-10-23 | 141 |  |
| 150 |  | Listado de estudiantes asignados | 4d | 2015-10-19 | 2015-10-23 | 141 | 0d |
| 151 |  | Reporte de estudiantes asignados | 3d | 2015-10-19 | 2015-10-22 | 141 | 1d |
| 152 |  | Reporte de estudiantes aprobados | 3d | 2015-10-19 | 2015-10-22 | 141 | 0d |
| 153 |  | Integración | 1d | 2015-10-23 | 2015-10-23 | 152 | 0d |
| 154 |  | Pruebas | 1d | 2015-10-23 | 2015-10-23 | 152 | 0d |
| 155 | 7.5 | **Módulo de administradores** | 5d | 2015-10-16 | 2015-10-23 | 90 |  |
| 156 |  | Asignar actividades a los distintos tipos de administradores | 4d | 2015-10-16 | 2015-10-22 | 90 | 0d |
| 157 |  | Integración | 1d | 2015-10-23 | 2015-10-23 | 156 | 0d |
| 158 |  | Pruebas | 1d | 2015-10-23 | 2015-10-23 | 156 | 0d |

## Version 2 (saved 2015-07-06)

Note of the change: actualizado

Last finish stays 2015-10-23.

Added:

| ID | Task | Duration | Start | Finish | Predecessors | Resources |
| --- | --- | --- | --- | --- | --- | --- |
| 159 | **Integración de pago de examen de recuperación** | 2d | 2015-10-20 | 2015-10-21 | 155 | Marlen Arias; Ricardo Cortez |
| 160 | Integración | 1d | 2015-10-21 | 2015-10-21 | 155 | Marlen Arias; Ricardo Cortez |
| 161 | Pruebas | 1d | 2015-10-21 | 2015-10-21 | 155 | Marlen Arias; Ricardo Cortez |
| 162 | Migración del sistema | 1d | 2015-10-22 | 2015-10-22 | 161 | Ana Moino; Gerson Xicon; Marlen Arias; Ricardo Cortez |
| 163 | Pruebas y capacitación de usuarios | 1d | 2015-10-23 | 2015-10-23 | 162 | Ana Moino; Gerson Xicon; Marlen Arias; Ricardo Cortez |

Changed:

| ID | Task | Start | Finish | Duration | Total float | Predecessors | Other |
| --- | --- | --- | --- | --- | --- | --- | --- |
| 33 | **Definición de la base de datos (Diagrama ER Fase II)** |  | 2015-06-09 → 2015-06-05 (-4d) | 7d → 5d |  |  |  |
| 37 | Implementación de detalles sobre manejo de asignaciones | 2015-06-08 → 2015-06-04 (-4d) | 2015-06-09 → 2015-06-05 (-4d) |  |  | 36 → 35 |  |
| 38 | **Definición de la base de datos (Diagrama ER Fase III)** | 2015-06-10 → 2015-06-08 (-2d) | 2015-06-16 → 2015-06-12 (-4d) |  |  |  |  |
| 39 | Implementación de detalles sobre manejo de pensum | 2015-06-10 → 2015-06-08 (-2d) | 2015-06-11 → 2015-06-09 (-2d) |  |  |  |  |
| 40 | Implementación de detalles sobre manejo de cursos | 2015-06-10 → 2015-06-08 (-2d) | 2015-06-11 → 2015-06-09 (-2d) |  |  |  |  |
| 41 | Implementación de detalles sobre manejo de notas | 2015-06-12 → 2015-06-10 (-2d) | 2015-06-15 → 2015-06-11 (-4d) |  |  |  |  |
| 42 | Implementación de detalles sobre manejo de des asignaciones | 2015-06-12 → 2015-06-10 (-2d) | 2015-06-16 → 2015-06-12 (-4d) |  |  |  |  |
| 43 | **Definición de la base de datos (Diagrama ER Fase IV)** | 2015-06-17 → 2015-06-15 (-2d) |  | 3d → 5d |  |  |  |
| 44 | Implementación de detalles sobre manejo de notas | 2015-06-17 → 2015-06-15 (-2d) | 2015-06-17 → 2015-06-16 (-1d) | 1d → 2d | 2d → 3d |  |  |
| 45 | Implementación de detalles sobre manejo de pre-requisitos | 2015-06-17 → 2015-06-15 (-2d) | 2015-06-18 → 2015-06-17 (-1d) | 2d → 3d | 1d → 0d |  |  |
| 46 | Implementación de detalles sobre creación de horarios | 2015-06-17 → 2015-06-18 (+1d) |  | 3d → 2d |  | 38 → 45 |  |
| 48 | **Definición de arquitectura** |  | 2015-07-06 → 2015-07-03 (-3d) | 10d → 9d |  |  |  |
| 55 | Diagramas de procesos | 2015-07-03 → 2015-07-01 (-2d) | 2015-07-06 → 2015-07-02 (-4d) |  | 0d → 1d | 53 → 51 |  |
| 56 | **Módulo de creación de usuarios** | 2015-07-07 → 2015-07-06 (-1d) | 2015-07-20 → 2015-07-17 (-3d) |  |  |  |  |
| 57 | Definición de roles | 2015-07-07 → 2015-07-06 (-1d) | 2015-07-07 → 2015-07-06 (-1d) |  |  |  |  |
| 58 | Crear usuario | 2015-07-08 → 2015-07-07 (-1d) | 2015-07-08 → 2015-07-07 (-1d) |  |  |  |  |
| 59 | Modificar usuario | 2015-07-09 → 2015-07-08 (-1d) | 2015-07-09 → 2015-07-08 (-1d) |  |  |  |  |
| 60 | Eliminar usuario | 2015-07-10 → 2015-07-09 (-1d) | 2015-07-13 → 2015-07-10 (-3d) |  |  |  |  |
| 61 | Validar usuarios con Departamento de registro y estadística | 2015-07-14 → 2015-07-13 (-1d) | 2015-07-15 → 2015-07-14 (-1d) |  |  |  |  |
| 62 | Integración | 2015-07-16 → 2015-07-15 (-1d) | 2015-07-17 → 2015-07-16 (-1d) |  |  |  |  |
| 63 | Pruebas | 2015-07-20 → 2015-07-17 (-3d) | 2015-07-20 → 2015-07-17 (-3d) |  |  |  |  |
| 132 | **Módulo de desasignación de estudiantes** |  | 2015-10-02 → 2015-09-30 (-2d) | 5d → 3d |  |  |  |
| 134 | Integración |  | 2015-10-01 → 2015-09-30 (-1d) | 2d → 1d |  |  |  |
| 135 | Pruebas | 2015-10-02 → 2015-09-30 (-2d) | 2015-10-02 → 2015-09-30 (-2d) |  |  | 134 → 133, 134 |  |
| 136 | **Módulo de ingreso de notas** | 2015-10-05 → 2015-10-01 (-4d) | 2015-10-09 → 2015-10-06 (-3d) | 5d → 4d |  |  |  |
| 137 | Listado de estudiantes asignados | 2015-10-05 → 2015-10-01 (-4d) | 2015-10-06 → 2015-10-02 (-4d) |  |  |  |  |
| 138 | Asociación de nota a estudiante | 2015-10-07 → 2015-10-05 (-2d) | 2015-10-08 → 2015-10-06 (-2d) |  |  |  |  |
| 139 | Integración | 2015-10-09 → 2015-10-06 (-3d) | 2015-10-09 → 2015-10-06 (-3d) |  | 0d → 12d |  | constraint none → start no earlier than 2015-10-06 |
| 140 | Pruebas | 2015-10-09 → 2015-10-06 (-3d) | 2015-10-09 → 2015-10-06 (-3d) |  | 0d → 12d |  | constraint none → start no earlier than 2015-10-06 |
| 141 | **Módulo de consulta de notas** | 2015-10-12 → 2015-10-07 (-5d) | 2015-10-16 → 2015-10-12 (-4d) | 5d → 4d |  |  |  |
| 142 | Listado de notas por estudiante | 2015-10-12 → 2015-10-07 (-5d) | 2015-10-14 → 2015-10-09 (-5d) |  | 2d → 1d |  |  |
| 143 | Promedio de notas por semestre | 2015-10-12 → 2015-10-07 (-5d) | 2015-10-14 → 2015-10-09 (-5d) |  | 2d → 1d |  |  |
| 144 | Promedio general de notas | 2015-10-12 → 2015-10-07 (-5d) | 2015-10-14 → 2015-10-09 (-5d) |  | 2d → 1d |  |  |
| 145 | Reporte de estudiantes asignados | 2015-10-12 → 2015-10-07 (-5d) | 2015-10-14 → 2015-10-09 (-5d) |  | 2d → 1d |  |  |
| 146 | Reporte de estudiantes aprobados | 2015-10-12 → 2015-10-07 (-5d) | 2015-10-14 → 2015-10-09 (-5d) |  |  |  |  |
| 147 | Integración | 2015-10-15 → 2015-10-12 (-3d) | 2015-10-16 → 2015-10-12 (-4d) | 2d → 1d |  |  |  |
| 148 | Pruebas | 2015-10-15 → 2015-10-12 (-3d) | 2015-10-16 → 2015-10-12 (-4d) | 2d → 1d |  |  |  |
| 149 | **Módulo de consulta de estudiantes** | 2015-10-19 → 2015-10-13 (-6d) | 2015-10-23 → 2015-10-15 (-8d) | 4d → 3d |  |  |  |
| 150 | Listado de estudiantes asignados | 2015-10-19 → 2015-10-13 (-6d) | 2015-10-23 → 2015-10-15 (-8d) | 4d → 3d |  |  |  |
| 151 | Reporte de estudiantes asignados | 2015-10-19 → 2015-10-13 (-6d) | 2015-10-22 → 2015-10-14 (-8d) | 3d → 2d |  |  |  |
| 152 | Reporte de estudiantes aprobados | 2015-10-19 → 2015-10-13 (-6d) | 2015-10-22 → 2015-10-14 (-8d) | 3d → 2d |  |  |  |
| 153 | Integración | 2015-10-23 → 2015-10-15 (-8d) | 2015-10-23 → 2015-10-15 (-8d) |  |  |  |  |
| 154 | Pruebas | 2015-10-23 → 2015-10-15 (-8d) | 2015-10-23 → 2015-10-15 (-8d) |  |  |  |  |
| 155 | **Módulo de administradores** |  | 2015-10-23 → 2015-10-19 (-4d) | 5d → 2d |  |  |  |
| 156 | Asignar actividades a los distintos tipos de administradores |  | 2015-10-22 → 2015-10-19 (-3d) | 4d → 2d |  |  |  |
| 157 | Integración | 2015-10-23 → 2015-10-19 (-4d) | 2015-10-23 → 2015-10-19 (-4d) |  | 0d → 3d |  | constraint none → start no earlier than 2015-10-19 |
| 158 | Pruebas | 2015-10-23 → 2015-10-19 (-4d) | 2015-10-23 → 2015-10-19 (-4d) |  | 0d → 3d |  | constraint none → start no earlier than 2015-10-19 |
